# Island 2026

Schedule from Primavera P6, 2029-10-01 to 2030-06-13, data date 2029-10-01.
{"projectName":"Island 2026","prodRates":[{"name":"Backfill/Compaction (cy/hr)","nameSnakeCase":"backfill_compaction_cy_hr_","value":35.0},{"name":"MEP Rough-In per Trade (sf/hr)","nameSnakeCase":"mep_rough_in_per_trade_sf_hr_","value":200.0},{"name":"Hauling (cy/hr)","nameSnakeCase":"hauling_cy_hr_","value":30.0},{"name":"Interior (sf/hr)","nameSnakeCase":"interior_sf_hr_","value":250.0},{"name":"Excavation (cy/hr)","nameSnakeCase":"excavation_cy_hr_","value":40.0},{"name":"Proofroll (sf/hr)","nameSnakeCase":"proofroll_sf_hr_","value":2000.0},{"name":"Slab-on-Grade (sf/hr)","nameSnakeCase":"slab_on_grade_sf_hr_","value":300.0}]}

## Calendars

- Default calendar: Mon-Fri 09:00-16:59; Sat-Sun off.

## Resources

| Resource | Group | Rate |
| --- | --- | --- |
| Site Setup Crew | labor | 240 |
| Tree Removal / Clearing Crew | labor | 240 |
| Demolition Crew (bleachers) | labor | 320 |
| Excavator | nonlabor |  |
| Earthwork Crew (excavation) | labor | 360 |
| Shoring / Stabilization Crew | labor | 360 |
| Compactor/Roller | nonlabor |  |
| Concrete Pump | nonlabor |  |
| Concrete Crew | labor | 520 |
| Underground Utilities Crew | labor | 320 |
| Exc | labor | 300 |
| Mobile Crane | nonlabor |  |
| Structural Crew | labor | 420 |
| Facade Install Crew | labor | 450 |
| HVAC Rough-In Crew | labor | 450 |
| Electrical Rough-In Crew | labor | 480 |
| Plumbing + Fire Protection Rough-In Crew | labor | 450 |
| Interiors Crew | labor | 260 |
| Commissioning / Controls Support | labor | 300 |
| TAB Team | labor | 300 |

## Schedule

| ID | WBS | Activity | Duration | Start | Finish | Predecessors | Resources | Cost |
| --- | --- | --- | --- | --- | --- | --- | --- | --- |
|  | 8 | **Island 2026** |  | 2029-10-01 | 2030-06-13 |  |  |  |
|  | SITE PREPARATION & DEMOLITION | **SITE PREPARATION & DEMOLITION** |  | 2029-10-01 | 2029-10-17 |  |  |  |
| A1070 |  | Install Construction Fencing | 3d | 2029-10-01 | 2029-10-03 |  | Site Setup Crew [24 h] | 5,760 |
| A1080 |  | Install Site Office & Welfare Units | 4d | 2029-10-04 | 2029-10-09 | A1070 | Site Setup Crew [32 h] | 7,680 |
| A1090 |  | Temporary Water Installation | 3d | 2029-10-04 | 2029-10-08 | A1070 | Site Setup Crew [24 h] | 5,760 |
| A1100 |  | Temporary Power Installation | 4d | 2029-10-04 | 2029-10-09 | A1070 | Site Setup Crew [32 h] | 7,680 |
| A1110 |  | Tree Removal & Clearing | 5d | 2029-10-04 | 2029-10-10 | A1070 | Tree Removal / Clearing Crew [40 h] | 9,600 |
| A1120 |  | Bleacher Demolition | 7d | 2029-10-04 | 2029-10-12 | A1070 | Demolition Crew (bleachers) [56 h] | 17,920 |
| A1140 |  | Crane Pad Construction | 5d | 2029-10-11 | 2029-10-17 | A1110 | Site Setup Crew [40 h] | 9,600 |
| A1150 |  | Laydown Area Preparation | 0d | 2029-10-11 | 2029-10-11 | A1110 | Site Setup Crew |  |
|  | EARTHWORK & BASEMENT | **EARTHWORK & BASEMENT** |  | 2029-10-01 | 2029-12-05 |  |  |  |
| A1170 |  | Full Basement Excavation | 7d | 2029-10-01 | 2029-10-09 |  | Excavator [56 h]; Earthwork Crew (excavation) [56 h] | 20,160 |
| A1180 |  | Shoring / Stabilization | 5d | 2029-10-10 | 2029-10-16 | A1170 | Shoring / Stabilization Crew [40 h] | 14,400 |
| A1190 |  | Subgrade Preparation | 4d | 2029-10-10 | 2029-10-15 | A1170 | Compactor/Roller [32 h]; Earthwork Crew (excavation) [32 h] | 11,520 |
| A1200 |  | Footings – Form/Rebar/Pour | 10d | 2029-10-16 | 2029-10-29 | A1190 | Concrete Pump [80 h]; Concrete Crew [80 h] | 41,600 |
| A1210 |  | Grade Beams | 7d | 2029-10-30 | 2029-11-07 | A1200 | Concrete Crew [56 h] | 29,120 |
| A1220 |  | Basement Retaining Walls | 3d | 2029-11-08 | 2029-11-12 | A1210 | Concrete Pump [24 h]; Concrete Crew [24 h] | 12,480 |
| A1230 |  | Waterproofing & Drainage | 5d | 2029-11-13 | 2029-11-19 | A1220 | Earthwork Crew (excavation) [40 h] | 14,400 |
| A1240 |  | Basement Slab on Grade | 7d | 2029-11-20 | 2029-11-28 | A1230 | Concrete Crew [56 h] | 29,120 |
| A1250 |  | Underground Utilities | 7d | 2029-11-20 | 2029-11-28 | A1230 | Underground Utilities Crew [56 h] | 17,920 |
| A1260 |  | Backfill & Compaction | 5d | 2029-11-29 | 2029-12-05 | A1250, A1240 | Compactor/Roller [40 h]; Earthwork Crew (excavation) [40 h]; Exc [40 h] | 26,400 |
|  | SUPERSTRUCTURE – ZONE A | **SUPERSTRUCTURE** |  | 2029-12-06 | 2030-01-01 |  |  |  |
| A1330 |  | Frame: Columns + Beams | 12d | 2029-12-06 | 2029-12-21 | A1260 | Mobile Crane [96 h]; Structural Crew [96 h] | 40,320 |
| A1340 |  | Floor | 3d | 2029-12-24 | 2029-12-26 | A1330 | Mobile Crane [24 h]; Structural Crew [24 h] | 10,080 |
| A1420 |  | Roof | 4d | 2029-12-27 | 2030-01-01 | A1340, A1330 | Mobile Crane [32 h]; Structural Crew [32 h] | 13,440 |

Notes:
- A1070: {"taskCrews":[],"taskEquipment":[],"taskMaterials":[]}
- A1080: Precedence Constraints: / - Install Construction Fencing [A1070]; {"taskCrews":[],"taskEquipment":[],"taskMaterials":[]}
- A1090: Precedence Constraints: / - Install Construction Fencing [A1070]; {"taskCrews":[],"taskEquipment":[],"taskMaterials":[]}
- A1100: Precedence Constraints: / - Install Construction Fencing [A1070]; {"taskCrews":[],"taskEquipment":[],"taskMaterials":[]}
- A1110: Precedence Constraints: / - Install Construction Fencing [A1070]; {"taskCrews":[],"taskEquipment":[],"taskMaterials":[]}
- A1120: Precedence Constraints: / - Install Construction Fencing [A1070]; {"taskCrews":[],"taskEquipment":[],"taskMaterials":[]}
- A1140: Precedence Constraints: / - Tree Removal & Clearing [A1110]; {"taskCrews":[],"taskEquipment":[],"taskMaterials":[]}
- A1150: Precedence Constraints: / - Tree Removal & Clearing [A1110]; {"taskCrews":[],"taskEquipment":[],"taskMaterials":[]}
- A1170: {"taskCrews":[],"taskEquipment":[],"taskMaterials":[]}
- A1180: Precedence Constraints: / - Full Basement Excavation [A1170]; {"taskCrews":[],"taskEquipment":[],"taskMaterials":[]}
- A1190: Precedence Constraints: / - Full Basement Excavation [A1170]; {"taskCrews":[],"taskEquipment":[],"taskMaterials":[]}
- A1200: Precedence Constraints: / - Subgrade Preparation [A1190]; {"taskCrews":[],"taskEquipment":[],"taskMaterials":[]}
- A1210: Precedence Constraints: / - Footings – Form/Rebar/Pour [A1200]; {"taskCrews":[],"taskEquipment":[],"taskMaterials":[]}
- A1220: Precedence Constraints: / - Grade Beams [A1210]; {"taskCrews":[],"taskEquipment":[],"taskMaterials":[]}
- A1230: Precedence Constraints: / - Basement Retaining Walls [A1220]; {"taskCrews":[],"taskEquipment":[],"taskMaterials":[]}
- A1240: Precedence Constraints: / - Waterproofing & Drainage [A1230]; {"taskCrews":[],"taskEquipment":[],"taskMaterials":[]}
- A1250: Precedence Constraints: / - Waterproofing & Drainage [A1230]; {"taskCrews":[],"taskEquipment":[],"taskMaterials":[]}
- A1260: Precedence Constraints: / - Underground Utilities [A1250] / - Basement Slab on Grade [A1240]; {"taskCrews":[],"taskEquipment":[],"taskMaterials":[]}
- A1330: Precedence Constraints: / - Backfill & Compaction [A1260]; {"taskCrews":[],"taskEquipment":[],"taskMaterials":[]}
- A1340: Precedence Constraints: / - Frame: Columns + Beams [A1330]; {"taskCrews":[],"taskEquipment":[],"taskMaterials":[]}
- A1420: Precedence Constraints: / - Floor [A1340] / - Frame: Columns + Beams [A1330]; {"taskCrews":[],"taskEquipment":[],"taskMaterials":[]}

| ID | WBS | Activity | Duration | Start | Finish | Predecessors | Resources | Cost |
| --- | --- | --- | --- | --- | --- | --- | --- | --- |
|  | ENVELOPE | **ENVELOPE** |  | 2030-01-02 | 2030-02-14 |  |  |  |
| A1590 |  | Facade Install + Glazing | 32d | 2030-01-02 | 2030-02-14 | A1420 | Mobile Crane [256 h]; Facade Install Crew [256 h] | 115,200 |
|  | MEP INSTALLATION | **MEP INSTALLATION** |  | 2030-02-15 | 2030-05-13 |  |  |  |
| A1670 |  | Mechanical Room Buildout | 14d | 2030-02-15 | 2030-03-06 | A1590 | HVAC Rough-In Crew [112 h] | 50,400 |
| A1680 |  | Main Electrical & Riser Install | 14d | 2030-02-15 | 2030-03-06 | A1590 | Electrical Rough-In Crew [112 h] | 53,760 |
| A1690 |  | MEP Rough-In | 48d | 2030-03-07 | 2030-05-13 | A1680, A1590 | Electrical Rough-In Crew [384 h]; Plumbing + Fire Protection Rough-In Crew [384 h]; HVAC Rough-In Crew [384 h] | 529,920 |
|  | INTERIOR FINISHES | **INTERIOR** |  | 2030-02-15 | 2030-04-29 |  |  |  |
| A1740 |  | Interior Framing | 12d | 2030-02-15 | 2030-03-04 | A1590 | Interiors Crew [96 h] | 24,960 |
| A1750 |  | Drywall & Finishes | 24d | 2030-03-05 | 2030-04-05 | A1740 | Interiors Crew [192 h] | 49,920 |
| A1760 |  | Ceiling Installation | 16d | 2030-04-08 | 2030-04-29 | A1750 | Interiors Crew [128 h] | 33,280 |
|  | COMMISSIONING & CLOSEOUT | **COMMISSIONING & CLOSEOUT** |  | 2030-04-30 | 2030-06-13 |  |  |  |
| A1820 |  | MEP Start-Up | 7d | 2030-04-30 | 2030-05-08 | A1760 | Commissioning / Controls Support [56 h]; Electrical Rough-In Crew [56 h]; Plumbing + Fire Protection Rough-In Crew [56 h]; HVAC Rough-In Crew [56 h] | 94,080 |
| A1860 |  | Final Inspections | 5d | 2030-04-30 | 2030-05-06 | A1760 | Commissioning / Controls Support [40 h] | 12,000 |
| A1830 |  | TAB | 7d | 2030-05-09 | 2030-05-17 | A1820 | TAB Team [56 h] | 16,800 |
| A1840 |  | Integrated Systems Testing | 5d | 2030-05-20 | 2030-05-24 | A1830 | Commissioning / Controls Support [40 h]; Electrical Rough-In Crew [40 h]; Plumbing + Fire Protection Rough-In Crew [40 h]; HVAC Rough-In Crew [40 h] | 67,200 |
| A1880 |  | Hurricane Contingency Buffer | 14d | 2030-05-27 | 2030-06-13 | A1840 |  |  |

Notes:
- A1590: Precedence Constraints: / - Roof [A1420]; {"taskCrews":[],"taskEquipment":[],"taskMaterials":[]}
- A1670: Precedence Constraints: / - Facade Install + Glazing [A1590]; {"taskCrews":[],"taskEquipment":[],"taskMaterials":[]}
- A1680: Precedence Constraints: / - Facade Install + Glazing [A1590]; {"taskCrews":[],"taskEquipment":[],"taskMaterials":[]}
- A1690: Precedence Constraints: / - Main Electrical & Riser Install [A1680] / - Facade Install + Glazing [A1590]; {"taskCrews":[],"taskEquipment":[],"taskMaterials":[]}
- A1740: Precedence Constraints: / - Facade Install + Glazing [A1590]; {"taskCrews":[],"taskEquipment":[],"taskMaterials":[]}
- A1750: Precedence Constraints: / - Interior Framing [A1740]; {"taskCrews":[],"taskEquipment":[],"taskMaterials":[]}
- A1760: Precedence Constraints: / - Drywall & Finishes [A1750]; {"taskCrews":[],"taskEquipment":[],"taskMaterials":[]}
- A1820: Precedence Constraints: / - Ceiling Installation [A1760]; {"taskCrews":[],"taskEquipment":[],"taskMaterials":[]}
- A1860: Precedence Constraints: / - Ceiling Installation [A1760]; {"taskCrews":[],"taskEquipment":[],"taskMaterials":[]}
- A1830: Precedence Constraints: / - MEP Start-Up [A1820]; {"taskCrews":[],"taskEquipment":[],"taskMaterials":[]}
- A1840: Precedence Constraints: / - TAB [A1830]; {"taskCrews":[],"taskEquipment":[],"taskMaterials":[]}
- A1880: Precedence Constraints: / - Integrated Systems Testing [A1840]; {"taskCrews":[],"taskEquipment":[],"taskMaterials":[]}
